# Simple Project Plan

Schedule from MS Project, 2016-08-16 to 2016-12-14, 3 hours a day, A marks actual dates.
Microsoft Corporation

## Calendars

- Estándar: Mon-Fri 12:00-15:00; Sat-Sun off.

## Resources

| Resource |
| --- |
| Diego Silva |
| Bastián Lillo |
| Celso Lagos |
| Jordán Donoso |
| Diego Madariaga |
| Sarita Gonzalez |
| Cliente |
| Equipo |

## Schedule

| ID | WBS | Task | Duration | Start | Finish | Predecessors | Complete | Constraint | Resources | Work | Actual work |
| --- | --- | --- | --- | --- | --- | --- | --- | --- | --- | --- | --- |
| 1 | 1 | **Planificación y Análisis** | 12d | 2016-08-16 A | 2016-08-31 A |  | 100% |  |  | 80h | 80h |
| 2 | 1.1 | **Análisis preliminar** | 4d | 2016-08-16 A | 2016-08-19 A |  | 100% |  | Celso Lagos; Bastián Lillo; Diego Madariaga; Diego Silva; Jordán Donoso | 27h | 27h |
| 3 | 1.1.1 | Entendimiento del problema | 1d | 2016-08-16 A | 2016-08-16 A |  | 100% |  |  |  |  |
| 4 | 1.1.2 | Recaudación de información del problema | 1d | 2016-08-17 A | 2016-08-17 A | 3 | 100% |  |  |  |  |
| 5 | 1.1.3 | Análisis del problema | 1d | 2016-08-18 A | 2016-08-18 A | 4 | 100% |  |  |  |  |
| 6 | 1.1.4 | Entendimiento mutuo del caso | 1d | 2016-08-19 A | 2016-08-19 A | 5 | 100% |  |  |  |  |
| 7 | 1.2 | **Creación del Project Charter** | 2d | 2016-08-22 A | 2016-08-23 A | 2 | 100% |  | Celso Lagos | 11h | 11h |
| 8 | 1.2.1 | Descripción del proyecto | 1d | 2016-08-22 A | 2016-08-22 A |  | 100% |  |  |  |  |
| 9 | 1.2.2 | Identificación del equipo del proyecto | 1d | 2016-08-22 A | 2016-08-22 A | 8 | 100% |  |  |  |  |
| 10 | 1.2.3 | Declaración de los objetivos del proyecto | 1d | 2016-08-23 A | 2016-08-23 A | 9 | 100% |  |  |  |  |
| 11 | 1.2.4 | Cronograma de los hitos | 1d | 2016-08-23 A | 2016-08-23 A | 10 | 100% |  |  |  |  |
| 12 | 1.3 | **Documentación ERS** | 7d | 2016-08-22 A | 2016-08-30 A | 2 | 100% |  | Diego Madariaga |  |  |
| 13 | 1.3.1 | Análisis del problema | 1d | 2016-08-22 A | 2016-08-22 A |  | 100% |  |  |  |  |
| 14 | 1.3.2 | Análisis de los requerimientos | 1d | 2016-08-23 A | 2016-08-23 A | 13 | 100% |  |  |  |  |
| 15 | 1.3.3 | Identificación de los Stakeholders | 1d | 2016-08-24 A | 2016-08-24 A | 14 | 100% |  |  |  |  |
| 16 | 1.3.4 | Identificación de los RF | 1d | 2016-08-25 A | 2016-08-25 A | 15 | 100% |  |  |  |  |
| 17 | 1.3.5 | Identificación de los RNF | 1d | 2016-08-26 A | 2016-08-26 A | 16 | 100% |  |  |  |  |
| 18 | 1.3.6 | Creación de los casos de uso | 1d | 2016-08-29 A | 2016-08-29 A | 17 | 100% |  |  |  |  |
| 19 | 1.3.7 | Creación de bocetos | 1d | 2016-08-30 A | 2016-08-30 A | 18 | 100% |  |  |  |  |
| 20 | 1.4 | **Estimación del proyecto basada en CU** | 5d | 2016-08-22 A | 2016-08-26 A | 2 | 100% |  | Diego Silva | 12h | 12h |
| 21 | 1.4.1 | Estimación de actores | 1d | 2016-08-22 A | 2016-08-22 A |  | 100% | start no earlier than 2016-08-22 |  |  |  |
| 22 | 1.4.2 | Estimación de CU | 1d | 2016-08-23 A | 2016-08-23 A | 21 | 100% |  |  |  |  |
| 23 | 1.4.3 | Factores de complejidades | 1d | 2016-08-24 A | 2016-08-24 A | 22 | 100% |  |  |  |  |
| 24 | 1.4.4 | Estimación del esfuerzo | 2d | 2016-08-25 A | 2016-08-26 A | 23 | 100% |  |  |  |  |

Notes:
- 1: Esta es una tarea de resumen. Use las tareas de resumen para poder organizar un proyecto en secciones.

| ID | WBS | Task | Duration | Start | Finish | Predecessors | Complete | Constraint | Resources | Work | Actual work |
| --- | --- | --- | --- | --- | --- | --- | --- | --- | --- | --- | --- |
| 25 | 1.5 | **Plan de Riegos** | 4d | 2016-08-22 A | 2016-08-25 A | 2 | 100% |  | Jordán Donoso | 12h | 12h |
| 26 | 1.5.1 | Análisis de los riegos iniciales | 2d | 2016-08-22 A | 2016-08-23 A |  | 100% |  |  |  |  |
| 27 | 1.5.2 | Identificación de nuevos riesgos | 1d | 2016-08-24 A | 2016-08-24 A | 26 | 100% |  |  |  |  |
| 28 | 1.5.3 | Definición de los monitoreos de los riegos | 1d | 2016-08-25 A | 2016-08-25 A | 27 | 100% |  |  |  |  |
| 29 | 1.6 | **Creación Matriz de comunicación y RACI** | 1d | 2016-08-29 A | 2016-08-29 A | 20 | 100% |  | Diego Silva | 3h | 3h |
| 30 | 1.6.1 | organigrama del proyecto | 1d | 2016-08-29 A | 2016-08-29 A |  | 100% |  |  |  |  |
| 31 | 1.6.2 | Declaración de la responsabilidad de los roles | 1d | 2016-08-29 A | 2016-08-29 A |  | 100% |  |  |  |  |
| 32 | 1.6.3 | Declaración de la comunicación de los roles | 1d | 2016-08-29 A | 2016-08-29 A |  | 100% |  |  |  |  |
| 33 | 1.7 | **Plan de Calidad** | 3d | 2016-08-22 A | 2016-08-24 A | 2 | 100% |  | Bastián Lillo | 9h | 9h |
| 34 | 1.7.1 | Definición de las actividades de calidad a realizarse | 1d | 2016-08-22 A | 2016-08-22 A |  | 100% |  |  |  |  |
| 35 | 1.7.2 | Documentación de la ERS y requerimientos no funcionales | 1d | 2016-08-23 A | 2016-08-23 A | 34 | 100% |  |  |  |  |
| 36 | 1.7.3 | Documentación del plan de verificación y validación | 1d | 2016-08-23 A | 2016-08-23 A | 34 | 100% |  |  |  |  |
| 37 | 1.7.4 | Declaración de estándares, practicas, convenciones y métricas | 1d | 2016-08-24 A | 2016-08-24 A | 35 | 100% |  |  |  |  |
| 38 | 1.7.5 | Definición de las revisiones y auditorias | 1d | 2016-08-24 A | 2016-08-24 A | 36 | 100% |  |  |  |  |
| 39 | 1.8 | **Métricas de calidad** | 1d | 2016-08-25 A | 2016-08-25 A | 33 | 100% |  | Bastián Lillo |  |  |
| 40 | 1.8.1 | Definición de las métricas | 1d | 2016-08-25 A | 2016-08-25 A |  | 100% |  |  |  |  |
| 41 | 1.9 | **Creación de BPM** | 2d | 2016-08-26 A | 2016-08-29 A | 39 | 100% |  | Bastián Lillo | 3h | 3h |
| 42 | 1.9.1 | Creación del diagrama del macro proceso del negocio | 1d | 2016-08-26 A | 2016-08-26 A |  | 100% |  |  |  |  |
| 43 | 1.9.2 | Creación de los diagramas de los procesos detallados del negocio | 1d | 2016-08-29 A | 2016-08-29 A | 42 | 100% |  |  |  |  |
| 44 | 1.10 | **Trazabilidad** | 1d | 2016-08-31 A | 2016-08-31 A | 12 | 100% |  | Diego Madariaga | 3h | 3h |
| 45 | 1.10.1 | Comparativa Requisitos v/s CU | 1d | 2016-08-31 A | 2016-08-31 A |  | 100% |  |  |  |  |
| 46 | 1.10.2 | Comparativa Procesos v/s CU | 1d | 2016-08-31 A | 2016-08-31 A |  | 100% |  |  |  |  |
| 47 | 1.10.3 | Comparativa Entidades v/s CU | 1d | 2016-08-31 A | 2016-08-31 A |  | 100% |  |  |  |  |
| 48 | 1.11 | **Acta de reuniones** | 6d | 2016-08-23 A | 2016-08-30 A |  | 100% |  |  |  |  |
| 49 | 1.11.1 | Acta de reuniones 1 | 1d | 2016-08-23 A | 2016-08-23 A |  | 100% | start no earlier than 2016-08-23 |  |  |  |
| 50 | 1.11.2 | Acta de reuniones 2 | 1d | 2016-08-30 A | 2016-08-30 A |  | 100% | start no earlier than 2016-08-30 |  |  |  |

| ID | WBS | Task | Duration | Start | Finish | Predecessors | Complete | Constraint | Resources | Work | Actual work |
| --- | --- | --- | --- | --- | --- | --- | --- | --- | --- | --- | --- |
| 51 | 1.12 | **Avance del proyecto** | 6d | 2016-08-23 A | 2016-08-30 A |  | 100% |  |  |  |  |
| 52 | 1.12.1 | Avance del proyecto 1 | 1d | 2016-08-23 A | 2016-08-23 A |  | 100% | start no earlier than 2016-08-23 |  |  |  |
| 53 | 1.12.2 | Avance del proyecto 2 | 1d | 2016-08-30 A | 2016-08-30 A |  | 100% | start no earlier than 2016-08-30 |  |  |  |
| 54 | 2 | **Diseño** | 7d | 2016-08-30 A | 2016-09-07 A |  | 100% |  |  | 15h | 15h |
| 55 | 2.1 | **Creación modelos conceptual** | 2d | 2016-08-30 A | 2016-08-31 A |  | 100% |  | Diego Silva | 6h | 6h |
| 56 | 2.1.1 | Modelado de los datos | 1d | 2016-08-30 A | 2016-08-30 A |  | 100% |  |  |  |  |
| 57 | 2.1.2 | Especificación de las variables | 1d | 2016-08-31 A | 2016-08-31 A | 56 | 100% |  |  |  |  |
| 58 | 2.1.3 | Documentación de reglas de negocio | 2d | 2016-08-30 A | 2016-08-31 A |  | 100% |  |  |  |  |
| 59 | 2.2 | **Creación modelos relacional** | 2d | 2016-09-01 A | 2016-09-02 A | 55 | 100% |  | Diego Silva |  |  |
| 60 | 2.2.1 | Creación de tablas y sus parámetros | 1d | 2016-09-01 A | 2016-09-01 A |  | 100% |  |  |  |  |
| 61 | 2.2.2 | Creación de relaciones | 1d | 2016-09-02 A | 2016-09-02 A | 60 | 100% |  |  |  |  |
| 62 | 2.3 | **Implementación de modelo de datos** | 2d | 2016-09-05 A | 2016-09-06 A | 59 | 100% |  | Jordán Donoso | 6h | 6h |
| 63 | 2.3.1 | Script de creación de la BD | 1d | 2016-09-05 A | 2016-09-05 A |  | 100% |  |  |  |  |
| 64 | 2.3.2 | Poblamiento de las tablas de la BD | 1d | 2016-09-06 A | 2016-09-06 A | 63 | 100% |  |  |  |  |
| 65 | 2.4 | **Construcción de paquetes de procedimiento** | 1d | 2016-09-07 A | 2016-09-07 A | 62 | 100% |  | Jordán Donoso | 3h | 3h |
| 66 | 2.4.1 | Construcción de unidades de programación de sentencias SQL | 1d | 2016-09-07 A | 2016-09-07 A |  | 100% |  |  |  |  |
| 67 | 2.4.2 | Desarrollo de 2 vista SQL | 1d | 2016-09-07 A | 2016-09-07 A |  | 100% |  |  |  |  |
| 68 | 2.5 | Acta de reuniones | 1d | 2016-09-06 A | 2016-09-06 A |  | 100% |  |  |  |  |
| 69 | 2.6 | Avance del proyecto | 1d | 2016-09-06 A | 2016-09-06 A |  | 100% |  |  |  |  |
| 70 | 3 | **Elaboración 2º Iteración** | 28d | 2016-09-07 A | 2016-10-14 A |  | 100% |  |  | 291h | 291h |
| 71 | 3.1 | **Análisis** | 24d | 2016-09-07 A | 2016-10-10 A | 69 | 100% |  |  | 108h | 108h |
| 72 | 3.1.1 | **Planificación de la iteración** | 8d | 2016-09-07 A | 2016-09-16 A |  | 100% |  | Diego Madariaga | 54h | 54h |
| 73 | 3.1.1.1 | Definición de roles | 2d | 2016-09-07 A | 2016-09-08 A |  | 100% |  | Sarita Gonzalez | 6h | 6h |
| 74 | 3.1.1.2 | Definicion de la lista de entregables | 2d | 2016-09-09 A | 2016-09-12 A | 73 | 100% |  | Sarita Gonzalez | 6h | 6h |
| 75 | 3.1.1.3 | Asignación de recursos | 2d | 2016-09-13 A | 2016-09-14 A | 74 | 100% |  | Diego Madariaga | 6h | 6h |
| 76 | 3.1.1.4 | Asignación de tareas | 2d | 2016-09-15 A | 2016-09-16 A | 75 | 100% |  | Diego Madariaga | 6h | 6h |
| 77 | 3.1.1.5 | Reuniones semanales | 1d | 2016-09-07 A | 2016-09-07 A |  | 100% |  | Celso Lagos | 3h | 3h |
| 78 | 3.1.1.6 | Control de riesgos | 1d | 2016-09-07 A | 2016-09-07 A |  | 100% |  | Diego Silva | 3h | 3h |

| ID | WBS | Task | Duration | Start | Finish | Predecessors | Complete | Constraint | Resources | Work | Actual work |
| --- | --- | --- | --- | --- | --- | --- | --- | --- | --- | --- | --- |
| 79 | 3.1.2 | **Diseño** | 24d | 2016-09-07 A | 2016-10-10 A |  | 100% |  |  | 54h | 54h |
| 80 | 3.1.2.1 | Definir arquitectura del Sistema | 4d | 2016-09-23 A | 2016-09-28 A | 76 | 100% | start no earlier than 2016-09-23 | Diego Madariaga | 12h | 12h |
| 81 | 3.1.2.2 | Crear Propuesta arquitectónica | 3d | 2016-09-29 A | 2016-10-03 A | 80 | 100% |  | Diego Madariaga | 9h | 9h |
| 82 | 3.1.2.3 | Documentar propuesta arquitectónica en documento IEEE-1471-2000 | 4d | 2016-10-04 A | 2016-10-07 A | 81 | 100% |  | Diego Madariaga | 12h | 12h |
| 83 | 3.1.2.4 | Definir métricas de calidad | 1d | 2016-09-07 A | 2016-09-07 A |  | 100% |  | Jordán Donoso | 3h | 3h |
| 84 | 3.1.2.5 | Aplicar heurísticas de J. Nielsen | 1d | 2016-10-10 A | 2016-10-10 A | 82 | 100% |  | Jordán Donoso | 3h | 3h |
| 85 | 3.1.2.6 | Diseño de bocetos | 2d | 2016-09-26 A | 2016-09-27 A | 75 | 100% |  | Bastián Lillo | 6h | 6h |
| 86 | 3.1.2.7 | Crear plan de pruebas | 1d | 2016-09-22 A | 2016-09-22 A | 91 | 100% |  | Jordán Donoso | 3h | 3h |
| 87 | 3.1.2.8 | Diseñar casos de prueba | 2d | 2016-09-15 A | 2016-09-16 A | 75 | 100% |  | Bastián Lillo | 6h | 6h |
| 88 | 3.2 | **Administración de requerimientos** | 5d | 2016-09-15 A | 2016-09-21 A |  | 100% |  | Bastián Lillo | 33h | 33h |
| 89 | 3.2.1 | Actualizar documento "Especificación de Requerimientos de Software" | 3d | 2016-09-15 A | 2016-09-19 A | 75 | 100% |  | Bastián Lillo | 9h | 9h |
| 90 | 3.2.2 | actualizar trazabilidad | 1d | 2016-09-20 A | 2016-09-20 A | 89 | 100% |  | Bastián Lillo | 3h | 3h |
| 91 | 3.2.3 | Definir Casos de uso a Confeccionar en la iteración | 2d | 2016-09-20 A | 2016-09-21 A | 89 | 100% |  | Bastián Lillo | 6h | 6h |
| 92 | 3.3 | **Programación** | 22d | 2016-09-15 A | 2016-10-14 A |  | 100% |  | Diego Silva | 150h | 150h |
| 93 | 3.3.1 | Preparar Ambiente de Programación | 3d | 2016-09-15 A | 2016-09-19 A | 75 | 100% |  | Bastián Lillo; Celso Lagos; Diego Madariaga; Diego Silva; Jordán Donoso | 45h | 45h |
| 94 | 3.3.2 | Crear acceso a datos desde Java | 3d | 2016-09-20 A | 2016-09-22 A | 93 | 100% |  | Diego Silva | 9h | 9h |
| 95 | 3.3.3 | Actualizar BD | 2d | 2016-09-20 A | 2016-09-21 A | 93 | 100% |  | Diego Silva; Celso Lagos | 12h | 12h |
| 96 | 3.3.4 | Programar paquetes en capa de datos | 1d | 2016-09-22 A | 2016-09-22 A | 95 | 100% |  | Diego Silva | 3h | 3h |
| 97 | 3.3.5 | Crear Template de Componentes | 3d | 2016-09-20 A | 2016-09-22 A | 89 | 100% |  | Jordán Donoso | 9h | 9h |
| 98 | 3.3.6 | Seguimiento de los avances CU | 1d | 2016-10-14 A | 2016-10-14 A | 104, 114, 124, 131, 138, 145 | 100% |  | Diego Madariaga | 3h | 3h |
| 99 | 3.3.7 | Seguimiento semanal del cronograma | 1d | 2016-09-15 A | 2016-09-15 A | 75 | 100% |  | Diego Madariaga | 3h | 3h |
| 100 | 4 | **Construcción 2º Iteración** | 54d | 2016-08-23 A | 2016-11-04 A |  | 100% |  |  | 1641.25h | 1641.25h |
| 101 | 4.1 | **Programación** | 49d | 2016-08-23 A | 2016-10-28 A |  | 100% |  |  | 1616.25h | 1616.25h |
| 102 | 4.1.1 | Aplicar arquitectura | 1d | 2016-10-10 A | 2016-10-10 A | 82 | 100% |  | Diego Madariaga; Diego Silva | 6h | 6h |

| ID | WBS | Task | Duration | Start | Finish | Predecessors | Complete | Actual start | Actual finish | Constraint | Resources | Work | Actual work |
| --- | --- | --- | --- | --- | --- | --- | --- | --- | --- | --- | --- | --- | --- |
| 103 | 4.1.2 | **CU 1 Ingresar Usuario** | 25.75d | 2016-09-23 A | 2016-10-28 A |  | 100% |  |  |  | Diego Madariaga | 473.25h | 473.25h |
| 104 | 4.1.2.1 | **Construir Casos de Uso de la Iteración** | 21d | 2016-09-23 A | 2016-10-21 A | 97 | 100% |  |  |  | Equipo [500%] | 381h | 381h |
| 105 | 4.1.2.1.1 | Ingresar usuario | 8d | 2016-09-23 A | 2016-10-04 A |  | 100% |  |  |  | Diego Madariaga | 24h | 24h |
| 106 | 4.1.2.1.2 | Modificar Usuario | 8d | 2016-10-05 A | 2016-10-14 A | 105 | 100% |  |  |  | Diego Madariaga | 24h | 24h |
| 107 | 4.1.2.1.3 | Eliminar Usuarios | 6d | 2016-09-23 A | 2016-10-21 A | 106 | 100% |  |  |  | Diego Madariaga | 18h | 18h |
| 108 | 4.1.2.2 | Realizar pruebas unitarias | 1d | 2016-10-14 A | 2016-10-24 A | 104 | 100% |  |  |  | Diego Madariaga | 3h | 3h |
| 109 | 4.1.2.3 | Validación del caso de uso | 1d | 2016-10-19 A | 2016-10-25 A | 108 | 100% |  |  |  | Bastián Lillo | 3h | 3h |
| 110 | 4.1.2.4 | Verificar casos de uso | 1d | 2016-10-25 A | 2016-10-26 A | 109 | 100% |  |  |  | Bastián Lillo | 3h | 3h |
| 111 | 4.1.2.5 | Aprobación del equipo a los CU | 1d | 2016-10-26 A | 2016-10-27 A | 110 | 100% |  |  |  | Equipo | 3h | 3h |
| 112 | 4.1.2.6 | Aceptación del cliente | 1d | 2016-10-27 A | 2016-10-28 A | 111 | 100% |  |  |  | Cliente | 3h | 3h |
| 113 | 4.1.3 | **CU 2 Ingresar Piloto** | 26d | 2016-09-23 | 2016-10-28 A |  | 100% | 2016-08-23 |  |  | Celso Lagos | 405h | 405h |
| 114 | 4.1.3.1 | **Construir Casos de Uso de la Iteración** | 21d | 2016-08-23 A | 2016-09-20 | 97 | 100% |  | 2016-10-19 |  | Celso Lagos [500%] | 375h | 375h |
| 115 | 4.1.3.1.1 | Ingresar Piloto | 7d | 2016-08-23 A | 2016-08-31 A |  | 100% |  |  |  | Celso Lagos | 21h | 21h |
| 116 | 4.1.3.1.2 | ingresar licencia | 7d | 2016-10-03 A | 2016-10-11 A | 115 | 100% |  |  | start no earlier than 2016-10-03 | Celso Lagos | 21h | 21h |
| 117 | 4.1.3.1.3 | Eliminar Piloto | 6d | 2016-10-12 A | 2016-10-19 A | 116 | 100% |  |  | start no earlier than 2016-10-12 | Celso Lagos | 18h | 18h |
| 118 | 4.1.3.2 | Realizar pruebas unitarias | 3d | 2016-10-20 A | 2016-10-24 A | 117 | 100% |  |  |  | Celso Lagos | 9h | 9h |
| 119 | 4.1.3.3 | Validación del caso de uso | 1d | 2016-10-25 A | 2016-10-25 A | 118 | 100% |  |  |  | Bastián Lillo | 3h | 3h |
| 120 | 4.1.3.4 | Verificar casos de uso | 1d | 2016-10-26 A | 2016-10-26 A | 119 | 100% |  |  |  | Bastián Lillo | 3h | 3h |
| 121 | 4.1.3.5 | Aprobación del equipo a los CU | 1d | 2016-10-27 A | 2016-10-27 A | 120 | 100% |  |  |  | Equipo | 3h | 3h |
| 122 | 4.1.3.6 | Aceptación del cliente | 1d | 2016-10-28 A | 2016-10-28 A | 121 | 100% |  |  |  | Cliente | 3h | 3h |
| 123 | 4.1.4 | **CU 3 Ingresar licencias Piloto** | 22d | 2016-09-23 A | 2016-10-24 A |  | 100% |  |  |  | Celso Lagos | 312h | 312h |
| 124 | 4.1.4.1 | Construir Casos de Uso de la Iteración | 15d | 2016-09-23 A | 2016-10-13 A | 97 | 100% |  |  |  | Celso Lagos [500%] | 225h | 225h |
| 125 | 4.1.4.2 | Realizar pruebas unitarias | 3d | 2016-10-14 A | 2016-10-18 A | 124 | 100% |  |  |  | Celso Lagos | 9h | 9h |
| 126 | 4.1.4.3 | Validación del caso de uso | 1d | 2016-10-19 A | 2016-10-19 A | 125 | 100% |  |  |  | Bastián Lillo | 3h | 3h |
| 127 | 4.1.4.4 | Verificar casos de uso | 1d | 2016-10-20 A | 2016-10-20 A | 126 | 100% |  |  |  | Bastián Lillo | 3h | 3h |
| 128 | 4.1.4.5 | Aprobación del equipo a los CU | 1d | 2016-10-21 A | 2016-10-21 A | 127 | 100% |  |  |  | Equipo | 3h | 3h |
| 129 | 4.1.4.6 | Aceptación del cliente | 1d | 2016-10-24 A | 2016-10-24 A | 128 | 100% |  |  |  | Cliente | 3h | 3h |

| ID | WBS | Task | Duration | Start | Finish | Predecessors | Complete | Constraint | Resources | Work | Actual work |
| --- | --- | --- | --- | --- | --- | --- | --- | --- | --- | --- | --- |
| 130 | 4.1.5 | **CU 4 Ingresar aeronave** | 22d | 2016-09-23 A | 2016-10-24 A |  | 100% |  | Jordán Donoso | 132h | 132h |
| 131 | 4.1.5.1 | Construir Casos de Uso de la Iteración | 15d | 2016-09-23 A | 2016-10-13 A | 97 | 100% |  | Jordán Donoso | 45h | 45h |
| 132 | 4.1.5.2 | Realizar pruebas unitarias | 3d | 2016-10-14 A | 2016-10-18 A | 131 | 100% |  | Jordán Donoso | 9h | 9h |
| 133 | 4.1.5.3 | Validación del caso de uso | 1d | 2016-10-19 A | 2016-10-19 A | 132 | 100% |  | Bastián Lillo | 3h | 3h |
| 134 | 4.1.5.4 | Verificar casos de uso | 1d | 2016-10-20 A | 2016-10-20 A | 133 | 100% |  | Bastián Lillo | 3h | 3h |
| 135 | 4.1.5.5 | Aprobación del equipo a los CU | 1d | 2016-10-21 A | 2016-10-21 A | 134 | 100% |  | Equipo | 3h | 3h |
| 136 | 4.1.5.6 | Aceptación del cliente | 1d | 2016-10-24 A | 2016-10-24 A | 135 | 100% |  | Cliente | 3h | 3h |
| 137 | 4.1.6 | **CU 5 Ingresar componentes** | 24d | 2016-09-23 A | 2016-10-26 A |  | 100% |  | Bastián Lillo | 144h | 144h |
| 138 | 4.1.6.1 | Construir Casos de Uso de la Iteración | 17d | 2016-09-23 A | 2016-10-17 A | 97 | 100% |  | Bastián Lillo | 51h | 51h |
| 139 | 4.1.6.2 | Realizar pruebas unitarias | 3d | 2016-10-18 A | 2016-10-20 A | 138 | 100% |  | Bastián Lillo | 9h | 9h |
| 140 | 4.1.6.3 | Validación del caso de uso | 1d | 2016-10-21 A | 2016-10-21 A | 139 | 100% |  | Bastián Lillo | 3h | 3h |
| 141 | 4.1.6.4 | Verificar casos de uso | 1d | 2016-10-24 A | 2016-10-24 A | 140 | 100% |  | Bastián Lillo | 3h | 3h |
| 142 | 4.1.6.5 | Aprobación del equipo a los CU | 1d | 2016-10-25 A | 2016-10-25 A | 141 | 100% |  | Equipo | 3h | 3h |
| 143 | 4.1.6.6 | Aceptación del cliente | 1d | 2016-10-26 A | 2016-10-26 A | 142 | 100% |  | Cliente | 3h | 3h |
| 144 | 4.1.7 | **CU 6 Ingresar vuelo** | 24d | 2016-09-23 A | 2016-10-26 A |  | 100% |  | Diego Silva | 144h | 144h |
| 145 | 4.1.7.1 | Construir Casos de Uso de la Iteración | 17d | 2016-09-23 A | 2016-10-17 A | 97 | 100% |  | Diego Silva | 51h | 51h |
| 146 | 4.1.7.2 | Realizar pruebas unitarias | 3d | 2016-10-18 A | 2016-10-20 A | 145 | 100% |  | Diego Silva | 9h | 9h |
| 147 | 4.1.7.3 | Validación del caso de uso | 1d | 2016-10-21 A | 2016-10-21 A | 146 | 100% |  | Bastián Lillo | 3h | 3h |
| 148 | 4.1.7.4 | Verificar casos de uso | 1d | 2016-10-24 A | 2016-10-24 A | 147 | 100% |  | Bastián Lillo | 3h | 3h |
| 149 | 4.1.7.5 | Aprobación del equipo a los CU | 1d | 2016-10-25 A | 2016-10-25 A | 148 | 100% |  | Equipo | 3h | 3h |
| 150 | 4.1.7.6 | Aceptación del cliente | 1d | 2016-10-26 A | 2016-10-26 A | 149 | 100% |  | Cliente | 3h | 3h |
| 151 | 4.2 | **Pruebas** | 9d | 2016-10-25 A | 2016-11-04 A |  | 100% |  |  | 25h | 25h |
| 152 | 4.2.1 | Actualizar plan de pruebas | 1d | 2016-10-27 A | 2016-10-27 A | 86 | 100% |  | Jordán Donoso | 3h | 3h |
| 153 | 4.2.2 | Ejecutar casos de prueba | 5d | 2016-10-25 A | 2016-10-31 A |  | 100% | start no earlier than 2016-10-25 | Bastián Lillo [66.7%] | 10h | 10h |
| 154 | 4.2.3 | Aplicar correcciones | 2d | 2016-11-01 A | 2016-11-02 A | 153 | 100% |  | Equipo | 6h | 6h |
| 155 | 4.2.4 | Cierre de pruebas | 1d | 2016-11-03 A | 2016-11-03 A | 154 | 100% |  | Bastián Lillo | 3h | 3h |
| 156 | 4.2.5 | Segunda entrega | 1d | 2016-11-04 A | 2016-11-04 A | 155 | 100% |  | Equipo | 3h | 3h |

| ID | WBS | Task | Type | Duration | Start | Finish | Predecessors | Complete | Constraint | Resources | Work | Actual work |
| --- | --- | --- | --- | --- | --- | --- | --- | --- | --- | --- | --- | --- |
| 157 | 5 | **Elaboración 3º Iteración** |  | 11d | 2016-11-08 A | 2016-11-22 A |  | 100% |  |  | 959.25h | 959.25h |
| 158 | 5.1 | **Análisis** |  | 11d | 2016-11-08 A | 2016-11-22 A |  | 100% |  | Diego Silva; Jordán Donoso; Equipo | 345h | 345h |
| 159 | 5.1.1 | **Planificación de la iteración** |  | 6d | 2016-11-08 A | 2016-11-15 A |  | 100% |  | Diego Silva; Jordán Donoso; Sarita Gonzalez; Bastián Lillo | 96h | 96h |
| 160 | 5.1.1.1 | Definición de roles |  | 4d | 2016-11-08 A | 2016-11-11 A |  | 100% |  | Sarita Gonzalez | 12h | 12h |
| 161 | 5.1.1.2 | Definicion de la lista de entregables |  | 4d | 2016-11-08 A | 2016-11-11 A | 160 | 100% |  | Sarita Gonzalez | 12h | 12h |
| 162 | 5.1.1.3 | Asignación de recursos |  | 1d | 2016-11-15 A | 2016-11-15 A | 161 | 100% |  | Diego Silva | 3h | 3h |
| 163 | 5.1.1.4 | Asignación de tareas |  | 1d | 2016-11-15 A | 2016-11-15 A | 162 | 100% |  | Diego Silva | 3h | 3h |
| 164 | 5.1.1.5 | Reuniones semanales |  | 1d | 2016-11-15 A | 2016-11-15 A |  | 100% |  | Jordán Donoso | 3h | 3h |
| 165 | 5.1.1.6 | Control de riesgos |  | 1d | 2016-11-15 A | 2016-11-15 A |  | 100% |  | Bastián Lillo | 3h | 3h |
| 166 | 5.1.2 | **Revisión de la iteración anterior** |  | 6d | 2016-11-15 A | 2016-11-22 A |  | 100% |  | Equipo | 54h | 54h |
| 167 | 5.1.2.1 | Corrección de la aplicación |  | 6d | 2016-11-15 A | 2016-11-22 A |  | 100% |  | Equipo | 18h | 18h |
| 168 | 5.1.2.2 | Corrección de los documentos |  | 6d | 2016-11-15 A | 2016-11-22 A |  | 100% |  | Equipo | 18h | 18h |
| 169 | 5.1.3 | **Diseño** |  | 6d | 2016-11-15 A | 2016-11-22 A |  | 100% |  | Diego Silva | 108h | 108h |
| 170 | 5.1.3.1 | **Capa de presentación** |  | 6d | 2016-11-15 A | 2016-11-22 A |  | 100% |  | Diego Silva; Diego Madariaga | 90h | 90h |
| 171 | 5.1.3.1.1 | Implementación de la capa de presentación |  | 6d | 2016-11-15 A | 2016-11-22 A |  | 100% | finish no earlier than 2016-11-22 | Diego Silva | 18h | 18h |
| 172 | 5.1.3.1.2 | Desarrollo de interfaces |  | 6d | 2016-11-15 A | 2016-11-22 A |  | 100% | finish no earlier than 2016-11-22 | Diego Silva | 18h | 18h |
| 173 | 5.1.3.1.3 | Desarrollo de pruebas con metricas | manual | 6d | 2016-11-15 A | 2016-11-22 A |  | 100% |  | Diego Madariaga | 18h | 18h |
| 174 | 5.2 | **Administración de requerimientos** |  | 6d | 2016-11-15 A | 2016-11-22 A |  | 100% |  | Bastián Lillo; Celso Lagos; Diego Silva | 218.25h | 218.25h |
| 175 | 5.2.1 | **Patrones** |  | 6d | 2016-11-15 A | 2016-11-22 A |  | 100% |  | Diego Silva; Bastián Lillo | 65.25h | 65.25h |
| 176 | 5.2.1.1 | Reconocimiento framework |  | 6d | 2016-11-15 A | 2016-11-22 A |  | 100% | finish no earlier than 2016-11-22 | Diego Silva | 18h | 18h |
| 177 | 5.2.1.2 | Desarrollo de la vista controlador |  | 6d | 2016-11-15 A | 2016-11-22 A |  | 100% | finish no earlier than 2016-11-22 | Bastián Lillo | 18h | 18h |
| 178 | 5.2.2 | **Negocio** |  | 6d | 2016-11-15 A | 2016-11-22 A |  | 100% |  | Bastián Lillo | 99h | 99h |
| 179 | 5.2.2.1 | Desarrollo de la capa de negocio |  | 6d | 2016-11-15 A | 2016-11-22 A |  | 100% | finish no earlier than 2016-11-22 | Bastián Lillo | 18h | 18h |
| 180 | 5.2.2.2 | **Informe de trazabilidad** |  | 6d | 2016-11-15 A | 2016-11-22 A |  | 100% |  | Celso Lagos; Jordán Donoso | 63h | 63h |
| 181 | 5.2.2.2.1 | Actualización del documento |  | 6d | 2016-11-15 A | 2016-11-22 A |  | 100% | finish no earlier than 2016-11-22 | Celso Lagos | 18h | 18h |
| 182 | 5.2.2.2.2 | Control de versiones |  | 6d | 2016-11-15 A | 2016-11-22 A |  | 100% | finish no earlier than 2016-11-22 | Celso Lagos; Jordán Donoso | 22.5h | 22.5h |

| ID | WBS | Task | Duration | Start | Finish | Predecessors | Complete | Constraint | Resources | Work | Actual work |
| --- | --- | --- | --- | --- | --- | --- | --- | --- | --- | --- | --- |
| 183 | 5.3 | **Programación** | 6d | 2016-11-15 A | 2016-11-22 A |  | 100% |  | Bastián Lillo; Diego Madariaga; Diego Silva; Jordán Donoso | 396h | 396h |
| 184 | 5.3.1 | **Acceso a datos** | 6d | 2016-11-15 A | 2016-11-22 A |  | 100% |  | Bastián Lillo; Jordán Donoso | 90h | 90h |
| 185 | 5.3.1.1 | Desarrollo de la conexión .NET | 6d | 2016-11-15 A | 2016-11-22 A |  | 100% | finish no earlier than 2016-11-22 | Bastián Lillo | 18h | 18h |
| 186 | 5.3.1.2 | Desarrollo del procedimiento Bach | 6d | 2016-11-15 A | 2016-11-22 A |  | 100% | finish no earlier than 2016-11-22 | Bastián Lillo | 18h | 18h |
| 187 | 5.3.1.3 | Modelo relacional actualizado | 6d | 2016-11-15 A | 2016-11-22 A |  | 100% | finish no earlier than 2016-11-22 | Jordán Donoso | 18h | 18h |
| 188 | 5.3.2 | **Documentación** | 6d | 2016-11-15 A | 2016-11-22 A |  | 100% |  | Bastián Lillo; Diego Madariaga; Diego Silva; Jordán Donoso | 162h | 162h |
| 189 | 5.3.2.1 | Seguimiento del cronograma | 6d | 2016-11-15 A | 2016-11-22 A |  | 100% | finish no earlier than 2016-11-22 | Diego Silva | 18h | 18h |
| 190 | 5.3.2.2 | Seguimiento de los avances CU | 6d | 2016-11-15 A | 2016-11-22 A |  | 100% | finish no earlier than 2016-11-22 | Diego Silva | 18h | 18h |
| 191 | 5.3.2.3 | Plan de calidad | 6d | 2016-11-15 A | 2016-11-22 A |  | 100% | finish no earlier than 2016-11-22 | Diego Madariaga | 18h | 18h |
| 192 | 5.3.2.4 | Actas de reuniones | 6d | 2016-11-15 A | 2016-11-22 A |  | 100% | finish no earlier than 2016-11-22 | Jordán Donoso | 18h | 18h |
| 193 | 5.3.2.5 | Controles de riesgos | 6d | 2016-11-15 A | 2016-11-22 A |  | 100% | finish no earlier than 2016-11-22 | Bastián Lillo | 18h | 18h |
| 194 | 5.3.3 | **Desarrollo de pruebas** | 6d | 2016-11-15 A | 2016-11-22 A |  | 100% |  | Celso Lagos | 72h | 72h |
| 195 | 5.3.3.1 | Desarrollo de pruebas componentes | 6d | 2016-11-15 A | 2016-11-22 A |  | 100% |  | Celso Lagos | 18h | 18h |
| 196 | 5.3.3.2 | Desarrollo de pruebas de integración | 6d | 2016-11-15 A | 2016-11-22 A |  | 100% |  | Celso Lagos | 18h | 18h |
| 197 | 5.3.3.3 | Desarrollo de pruebas de aceptación | 6d | 2016-11-15 A | 2016-11-22 A |  | 100% |  | Celso Lagos | 18h | 18h |
| 198 | 6 | **Contruccion 3º Iteración** | 15d | 2016-11-23 A | 2016-12-13 A | 157 | 100% |  | Equipo | 762h | 762h |
| 199 | 6.1 | **Programación** | 14d | 2016-11-23 A | 2016-12-12 A |  | 100% |  | Equipo | 672h | 672h |
| 200 | 6.1.1 | **Aplicación** | 14d | 2016-11-23 A | 2016-12-12 A |  | 100% |  | Bastián Lillo; Diego Madariaga; Jordán Donoso | 336h | 336h |
| 201 | 6.1.1.1 | CU 07 - Ingresar mantenimiento | 14d | 2016-11-23 A | 2016-12-12 A |  | 100% |  | Bastián Lillo; Diego Silva; Jordán Donoso | 126h | 126h |
| 202 | 6.1.1.2 | CU 10 - Generar reporte de mantenimiento | 14d | 2016-11-23 A | 2016-12-12 A |  | 100% |  | Bastián Lillo; Jordán Donoso; Diego Silva | 84h | 84h |
| 203 | 6.1.2 | **WEB** | 14d | 2016-11-23 A | 2016-12-12 A |  | 100% |  | Celso Lagos; Diego Madariaga | 252h | 252h |
| 204 | 6.1.2.1 | CU 08 - Consultar horas de vuelo | 14d | 2016-11-23 A | 2016-12-12 A |  | 100% |  | Celso Lagos; Diego Madariaga | 84h | 84h |
| 205 | 6.1.2.2 | CU 09 - Mostrar aeronaves en mantenimiento | 14d | 2016-11-23 A | 2016-12-12 A |  | 100% |  | Celso Lagos; Diego Madariaga | 84h | 84h |
| 206 | 6.1.3 | Refactorización de código | 14d | 2016-11-23 A | 2016-12-12 A |  | 100% |  | Jordán Donoso | 42h | 42h |

| ID | WBS | Task | Duration | Start | Finish | Complete | Constraint | Resources | Work | Actual work |
| --- | --- | --- | --- | --- | --- | --- | --- | --- | --- | --- |
| 207 | 6.2 | **Pruebas** | 1d | 2016-12-13 A | 2016-12-13 A | 100% |  | Celso Lagos; Diego Madariaga | 45h | 45h |
| 208 | 6.2.1 | Pruebas de componentes | 1d | 2016-12-13 A | 2016-12-13 A | 100% |  | Celso Lagos | 3h | 3h |
| 209 | 6.2.2 | **Pruebas de intregación** | 1d | 2016-12-13 A | 2016-12-13 A | 100% |  | Celso Lagos; Diego Madariaga | 18h | 18h |
| 210 | 6.2.2.1 | Pruebas interfuncionales | 1d | 2016-12-13 A | 2016-12-13 A | 100% |  | Celso Lagos | 3h | 3h |
| 211 | 6.2.2.2 | Pruebas de consistencia | 1d | 2016-12-13 A | 2016-12-13 A | 100% |  | Celso Lagos | 3h | 3h |
| 212 | 6.2.2.3 | Pruebas de atributos de calidad | 1d | 2016-12-13 A | 2016-12-13 A | 100% |  | Diego Madariaga | 3h | 3h |
| 213 | 6.2.2.4 | Documentación de pruebas de integración | 1d | 2016-12-13 A | 2016-12-13 A | 100% |  | Celso Lagos | 3h | 3h |
| 214 | 6.2.3 | **Pruebas de aceptación** | 1d | 2016-12-13 A | 2016-12-13 A | 100% |  | Celso Lagos; Diego Madariaga | 12h | 12h |
| 215 | 6.2.3.1 | Check-List | 1d | 2016-12-13 A | 2016-12-13 A | 100% |  | Diego Madariaga | 3h | 3h |
| 216 | 6.2.3.2 | Pruebas de usabilidad | 1d | 2016-12-13 A | 2016-12-13 A | 100% |  | Celso Lagos | 3h | 3h |
| 217 | 6.2.4 | Pruebas con metricas | 1d | 2016-12-13 A | 2016-12-13 A | 100% |  | Diego Madariaga | 3h | 3h |
| 218 | 6.2.5 | Pruebas finales | 1d | 2016-12-13 A | 2016-12-13 A | 100% |  | Celso Lagos | 3h | 3h |
| 219 | 7 | **Cierre de proyecto** | 1d | 2016-12-14 A | 2016-12-14 A | 100% |  | Equipo | 15h | 15h |
| 220 | 7.1 | Entrega de software final | 1d | 2016-12-14 A | 2016-12-14 A | 100% | start no earlier than 2016-12-14 | Jordán Donoso | 3h | 3h |
| 221 | 7.2 | Carta Gantt | 1d | 2016-12-14 A | 2016-12-14 A | 100% |  | Diego Silva | 3h | 3h |
| 222 | 7.3 | Informe de cierre de proyecto | 1d | 2016-12-14 A | 2016-12-14 A | 100% | start no earlier than 2016-12-14 | Diego Silva | 3h | 3h |
| 223 | 7.4 | AnalisisPostMortem | 1d | 2016-12-14 A | 2016-12-14 A | 100% | start no earlier than 2016-12-14 | Diego Silva | 3h | 3h |
